# IS_Fast&Food(2007)

Schedule from MS Project, 2013-11-11 to 2014-09-11, status date 2014-08-25, costs in €.

## Calendars

- Estándar: Mon-Fri 09:00-13:00, 15:00-19:00; Sat-Sun off. Exceptions (off unless hours are given): 2014-05-25 09:00-13:00, 15:00-19:00.

## Resources

| Resource | Rate |
| --- | --- |
| Javi | 10 |
| Borja | 10 |
| Christian |  |

## Schedule

| ID | WBS | Task | Type | Duration | Start | Finish | Predecessors | Total slack | Free slack | Constraint | Resources | Work | Cost |
| --- | --- | --- | --- | --- | --- | --- | --- | --- | --- | --- | --- | --- | --- |
| 1 | 1 | **Fast and Food** |  | 219d | 2013-11-11 | 2014-09-11 |  | 0d |  |  |  | 1330.16h | 10,821.99 |
| 2 | 1.1 | **Fase 1** |  | 143d | 2013-11-11 | 2014-05-27 |  | 66.62d | 0d |  |  | 961.08h | 7,895.17 |
| 3 | 1.1.1 | **Comunicación con el cliente** |  | 30d | 2013-11-11 | 2013-12-20 |  | 142.7d | 0d |  |  | 167.52h | 1,116.8 |
| 4 | 1.1.1.1 | Tematica Proyecto Decidida |  | 8d | 2013-11-11 | 2013-11-15 |  | 161.7d | 15d | start no earlier than 2013-11-11 | Javi; Borja; Christian | 120h | 800 |
| 5 | 1.1.1.2 | SRS |  | 10d | 2013-12-09 | 2013-12-16 | 4 | 146.7d | 4d | finish no earlier than 2013-12-16 | Javi [33%]; Borja [33%]; Christian [33%] | 47.52h | 316.8 |
| 6 | 1.1.1.3 | Entrega SRS | milestone | 0d | 2013-12-20 | 2013-12-20 | 5 | 142.7d |  | start no earlier than 2013-12-20 | Javi; Borja; Christian |  |  |
| 7 | 1.1.2 | Fin de comunicación con el cliente | milestone | 0d | 2013-12-20 | 2013-12-20 | 3 | 142.7d | 9.7d | start no earlier than 2013-12-20 | Javi; Borja; Christian |  |  |
| 8 | 1.1.3 | **Planificación y Evaluación (Proyecto)** |  | 14.3d | 2014-01-03 | 2014-01-24 | 7 | 130d | 0d |  |  | 20.72h | 52.8 |
| 9 | 1.1.3.1 | Planificación y Evaluación (Proyecto) |  | 6.3d | 2014-01-03 | 2014-01-08 |  | 133d | 0d | finish no earlier than 2014-01-08 | Borja [10%]; Javi [10%]; Christian [10%] | 7.92h | 52.8 |
| 10 | 1.1.3.2 | Plan de proyecto |  | 8d | 2014-01-09 | 2014-01-20 | 9 | 133d | 3d | start no earlier than 2014-01-09 | Borja [20%]; Javi [20%]; Christian [20%] | 12.8h |  |
| 11 | 1.1.3.3 | Entrega Plan de Proyecto | milestone | 0d | 2014-01-24 | 2014-01-24 | 10 | 130d |  | start no earlier than 2014-01-24 | Javi; Borja; Christian |  |  |
| 12 | 1.1.4 | Fin de planificación y evaluación | milestone | 0d | 2014-01-24 | 2014-01-24 | 8 | 130d | 26d | start no earlier than 2014-01-24 | Javi; Borja; Christian |  |  |
| 13 | 1.1.5 | **Módulo de usuarios (MU)** |  | 53d | 2014-03-14 | 2014-05-26 | 12 | 66.88d | 0d |  |  | 119h | 1,158 |
| 14 | 1.1.5.1 | Análisis MU |  | 10d | 2014-03-14 | 2014-03-17 |  | 97d | 8.38d | start no earlier than 2014-03-14 | Javi [10.1%]; Borja [10.1%] | 16.2h | 162 |
| 15 | 1.1.5.2 | Diseño MU |  | 22d | 2014-03-28 | 2014-04-04 | 14 | 89.38d | 3.38d | start no earlier than 2014-03-28 | Borja [10.1%]; Javi [10.1%] | 35.4h | 354 |
| 16 | 1.1.5.3 | Codificación MU |  | 40d | 2014-05-12 | 2014-05-25 | 37 | 67.12d | 0.25d | finish no earlier than 2014-05-25 | Javi [10%]; Borja [10%] | 64.2h | 642 |
| 17 | 1.1.5.4 | Prueba MU |  | 1d | 2014-05-26 | 2014-05-26 | 16 | 66.88d |  | start no earlier than 2014-05-26 | Christian [40%] | 3.2h |  |
| 18 | 1.1.6 | Fin de módulo de usuarios | milestone | 0d | 2014-05-26 | 2014-05-26 | 13 | 66.88d | 0d | start no earlier than 2014-05-26 | Javi; Borja; Christian |  |  |
| 19 | 1.1.7 | **Módulo de ventas (MV)** |  | 59d | 2014-03-06 | 2014-05-26 | 12 | 66.88d | 0d |  |  | 184.86h | 1,776.57 |
| 20 | 1.1.7.1 | Análisis MV |  | 5.38d | 2014-03-06 | 2014-03-10 |  | 102d | 13d | start no earlier than 2014-03-06 | Christian [10%]; Borja [10%]; Javi [7%] | 7.2h | 48 |
| 21 | 1.1.7.2 | Diseño MV |  | 11d | 2014-03-28 | 2014-04-04 | 20 | 89d | 3d | finish no earlier than 2014-04-04 | Borja [10%]; Christian [10%]; Javi [10%] | 14.4h | 96 |
| 22 | 1.1.7.3 | Codificacion MV |  | 61d | 2014-05-05 | 2014-05-25 | 37 | 67.38d | 0.5d | finish no earlier than 2014-05-25 | Javi [22.3%]; Borja [11%] | 162.46h | 1,624.57 |
| 23 | 1.1.7.4 | Prueba MV |  | 1d | 2014-05-26 | 2014-05-26 | 22 | 66.88d |  | finish no earlier than 2014-05-26 | Borja [10%] | 0.8h | 8 |
| 24 | 1.1.8 | Fin de módulo de ventas | milestone | 0d | 2014-05-26 | 2014-05-26 | 19 | 66.88d | 0d | start no earlier than 2014-05-26 | Javi; Borja; Christian |  |  |

| ID | WBS | Task | Type | Duration | Start | Finish | Predecessors | Total slack | Free slack | Constraint | Resources | Work | Cost |
| --- | --- | --- | --- | --- | --- | --- | --- | --- | --- | --- | --- | --- | --- |
| 25 | 1.1.9 | **Módulo del almacén (MA)** |  | 61.5d | 2014-03-03 | 2014-05-26 | 12 | 67.38d | 0d |  |  | 97.1h | 895 |
| 26 | 1.1.9.1 | Análisis MA |  | 6d | 2014-03-03 | 2014-03-06 |  | 104d | 15d | start no earlier than 2014-03-03 | Borja [10%]; Christian [7.5%] | 4.8h | 24 |
| 27 | 1.1.9.2 | Diseño MA |  | 11d | 2014-03-28 | 2014-04-04 | 26 | 89d | 3d | start no earlier than 2014-03-28 | Javi [10%]; Christian [10%] | 9.6h | 48 |
| 28 | 1.1.9.3 | Codificación MA |  | 34d | 2014-05-14 | 2014-05-25 | 37 | 67.62d | 0.25d | finish no earlier than 2014-05-25 | Borja [30.1%] | 81.9h | 819 |
| 29 | 1.1.9.4 | Prueba MA |  | 0.62d | 2014-05-26 | 2014-05-26 | 28 | 67.38d |  | start no earlier than 2014-05-26 | Christian [10%]; Javi [20%] | 0.8h | 4 |
| 30 | 1.1.10 | Fin de módulo del almacén | milestone | 0d | 2014-05-26 | 2014-05-26 | 25 | 67.38d | 0.5d | start no earlier than 2014-05-26 | Javi; Borja; Christian |  |  |
| 31 | 1.1.11 | **Módulo de pedidos (MP)** |  | 56.25d | 2014-03-10 | 2014-05-26 | 12 | 66.88d | 0d |  |  | 193.8h | 1,836 |
| 32 | 1.1.11.1 | Análisis MP |  | 6d | 2014-03-10 | 2014-03-14 |  | 98.25d | 9.25d | finish no earlier than 2014-03-14 | Christian [11.9%]; Javi [10%] | 6.2h | 24 |
| 33 | 1.1.11.2 | Diseño MP |  | 11d | 2014-03-28 | 2014-04-04 | 32 | 89d | 3d | finish no earlier than 2014-04-04 | Borja [10%]; Christian [10%] | 9.6h | 48 |
| 34 | 1.1.11.3 | Codificación MP |  | 55d | 2014-05-07 | 2014-05-25 | 37 | 67.12d | 0.25d | finish no earlier than 2014-05-25 | Borja [20%]; Javi [20%] | 176.4h | 1,764 |
| 35 | 1.1.11.4 | Prueba MP |  | 1d | 2014-05-26 | 2014-05-26 | 34 | 66.88d |  | finish no earlier than 2014-05-26 | Christian [20%] | 1.6h |  |
| 36 | 1.1.12 | Fin de módulo de pedidos | milestone | 0d | 2014-05-26 | 2014-05-26 | 31 | 66.88d | 0d | start no earlier than 2014-05-26 | Javi; Borja; Christian |  |  |
| 37 | 1.1.13 | Entrega del diseño de la aplicación | milestone | 0d | 2014-04-10 | 2014-04-10 | 15, 21, 27, 33 | 86d | 15d | start no earlier than 2014-04-10 | Javi; Borja; Christian |  |  |
| 38 | 1.1.14 | Corrección de la SRS antes de la entrega final |  | 17.49d | 2014-05-01 | 2014-05-12 | 37 | 73.25d | 2.12d | start no earlier than 2014-05-01 | Borja [33%]; Javi [33%]; Christian [34%] | 83.08h | 620 |
| 39 | 1.1.15 | Corrección del plan de proyecto antes de la entrega final |  | 1.88d | 2014-05-14 | 2014-05-16 | 38 | 71.12d | 0d | finish no earlier than 2014-05-16 | Christian | 15h |  |
| 40 | 1.1.16 | Corrección del diseño |  | 7.25d | 2014-05-16 | 2014-05-22 | 39 | 71.12d |  | finish no earlier than 2014-05-21 | Borja; Christian | 60h | 300 |
| 41 | 1.1.17 | Prueba proyecto en general | milestone | 0d | 2014-05-26 | 2014-05-26 | 18, 24, 30, 36 | 66.88d | 0d | start no earlier than 2014-05-26 | Borja [10%]; Javi [10%] |  |  |
| 42 | 1.1.18 | Manual de instalación | milestone | 0d | 2014-05-26 | 2014-05-26 | 41 | 66.88d | 0d |  | Javi |  |  |
| 43 | 1.1.19 | Manual de uso | milestone | 0d | 2014-05-26 | 2014-05-26 | 42 | 66.88d | 0d |  | Borja |  |  |
| 44 | 1.1.20 | Casos de prueba y memoria | milestone | 0d | 2014-05-26 | 2014-05-26 | 43 | 66.88d | 0.25d |  | Christian |  |  |
| 45 | 1.1.21 | Presentacion del proyecto |  | 1d | 2014-05-27 | 2014-05-27 | 44 | 66.62d |  | finish no earlier than 2014-05-27 | Javi; Borja; Christian | 20h | 140 |
| 46 | 1.2 | Fin de fase 1 | milestone | 0d | 2014-05-27 | 2014-05-27 | 2 | 66.62d | 24d | start no earlier than 2014-05-27 | Javi; Borja; Christian |  |  |
| 47 | 1.3 | **Fase 2** |  | 52d | 2014-07-01 | 2014-09-11 | 46 | 0d |  |  |  | 369.08h | 2,926.82 |
| 48 | 1.3.1 | **Comunicación con el cliente** |  | 9.38d | 2014-08-11 | 2014-08-22 |  | 13.25d | 0d |  |  | 72h | 420 |
| 49 | 1.3.1.1 | Corrección de la SRS |  | 15.62d | 2014-08-11 | 2014-08-22 |  | 13.25d |  | finish no earlier than 2014-08-22 | Javi [40%]; Christian [40%]; Borja [20%] | 72h | 420 |
| 50 | 1.3.2 | Fin de comunicación con el cliente | milestone | 0d | 2014-08-22 | 2014-08-22 | 48 | 13.25d |  |  | Javi; Borja; Christian |  |  |

| ID | WBS | Task | Type | Duration | Start | Finish | Predecessors | Total slack | Free slack | Constraint | Resources | Work | Cost |
| --- | --- | --- | --- | --- | --- | --- | --- | --- | --- | --- | --- | --- | --- |
| 51 | 1.3.3 | **Planificación y evaluación** |  | 2d | 2014-08-22 | 2014-08-26 |  | 11.25d | 0d |  |  | 16h | 96 |
| 52 | 1.3.3.1 | Corrección del plan de proyecto |  | 3.75d | 2014-08-22 | 2014-08-26 |  | 11.25d |  | finish no earlier than 2014-08-26 | Javi [40%]; Christian [40%]; Borja [20%] | 16h | 96 |
| 53 | 1.3.4 | Fin de planificación y evaluación | milestone | 0d | 2014-08-26 | 2014-08-26 | 51 | 11.25d | 3d | start no earlier than 2014-08-26 | Javi; Borja; Christian |  |  |
| 54 | 1.3.5 | **Módulo de usuarios (MU)** |  | 29d | 2014-07-01 | 2014-08-11 |  | 22.25d | 0d |  |  | 44h | 240 |
| 55 | 1.3.5.1 | Corrección del diseño MU |  | 5d | 2014-07-01 | 2014-07-08 |  | 44.25d | 23.25d | finish no earlier than 2014-07-08 | Christian [50%] | 20h |  |
| 56 | 1.3.5.2 | Completitud de codificación MU |  | 6d | 2014-08-09 | 2014-08-11 | 55 | 21d |  | finish no earlier than 2014-08-11 | Borja [50%] | 24h | 240 |
| 57 | 1.3.6 | Fin de módulo de usuario | milestone | 0d | 2014-08-11 | 2014-08-11 | 54 | 22.25d |  | start no earlier than 2014-08-11 | Javi; Borja; Christian |  |  |
| 58 | 1.3.7 | **Módulo de ventas (MV)** |  | 21.75d | 2014-07-01 | 2014-07-30 |  | 30.25d | 0d |  |  | 149.08h | 1,490.82 |
| 59 | 1.3.7.1 | Corrección del diseño MV |  | 22d | 2014-07-01 | 2014-07-08 |  | 43.38d | 13.12d | start no earlier than 2014-07-01 | Javi [50.6%] | 89.08h | 890.82 |
| 60 | 1.3.7.2 | Completitud de codificación MU |  | 15d | 2014-07-25 | 2014-07-30 | 59 | 30.25d |  | finish no earlier than 2014-07-30 | Borja [50%] | 60h | 600 |
| 61 | 1.3.8 | Fin de módulo de ventas | milestone | 0d | 2014-07-30 | 2014-07-30 | 58 | 30.25d | 22d | start no earlier than 2014-07-30 | Javi; Borja; Christian |  |  |
| 62 | 1.3.9 | **Módulo del almacén (MA)** |  | 38d | 2014-07-01 | 2014-08-22 |  | 13.25d | 0d |  |  | 52h | 320 |
| 63 | 1.3.9.1 | Corrección del diseño MA |  | 5d | 2014-07-01 | 2014-07-08 |  | 43.88d | 30.25d | finish no earlier than 2014-07-08 | Christian [50%] | 20h |  |
| 64 | 1.3.9.2 | Completitud de codificación MA |  | 8d | 2014-08-20 | 2014-08-22 | 63 | 13.25d |  | finish no earlier than 2014-08-22 | Borja [50%] | 32h | 320 |
| 65 | 1.3.10 | Fin de módulo del almacén | milestone | 0d | 2014-08-22 | 2014-08-22 | 62 | 13.25d | 5d | start no earlier than 2014-08-22 | Javi; Borja; Christian |  |  |
| 66 | 1.3.11 | **Módulo de pedidos (MP)** |  | 39.75d | 2014-07-07 | 2014-08-29 |  | 8.25d | 0d |  |  | 36h | 360 |
| 67 | 1.3.11.1 | Corrección del diseño MP |  | 5d | 2014-07-07 | 2014-07-08 |  | 45d | 36.25d | finish no earlier than 2014-07-08 | Javi [50%] | 20h | 200 |
| 68 | 1.3.11.2 | Completitud de codificación MP |  | 4d | 2014-08-28 | 2014-08-29 | 67 | 8.25d |  | finish no earlier than 2014-08-29 | Borja [50%] | 16h | 160 |
| 69 | 1.3.12 | Fin de módulo de pedidos | milestone | 0d | 2014-08-29 | 2014-08-29 | 66 | 8.25d | 0d | start no earlier than 2014-08-29 | Javi; Borja; Christian |  |  |
| 70 | 1.3.13 | Prueba del proyecto en general | milestone | 0d | 2014-08-29 | 2014-08-29 | 53, 61, 65, 69 | 8.25d | 0.25d | start no earlier than 2014-08-29 | Christian; Borja; Javi |  |  |
| 71 | 1.3.14 | Revisión del manual de instalación | milestone | 0d | 2014-09-01 | 2014-09-01 | 70 | 8d | 2d | start no earlier than 2014-09-01 | Borja |  |  |
| 72 | 1.3.15 | Revisión del manual de uso | milestone | 0d | 2014-09-03 | 2014-09-03 | 71 | 6d | 2d | start no earlier than 2014-09-03 | Christian |  |  |
| 73 | 1.3.16 | Revisión de casos de prueba y memoria | milestone | 0d | 2014-09-05 | 2014-09-05 | 72 | 4d |  | start no earlier than 2014-09-05 | Javi |  |  |
| 74 | 1.3.17 | Presentacion del proyecto | milestone | 0d | 2014-09-11 | 2014-09-11 | 73 | 0d |  | start no earlier than 2014-09-11 | Javi; Borja; Christian |  |  |
| 75 | 1.4 | Fin de fase 2 | milestone | 0d | 2014-09-11 | 2014-09-11 | 47 | 0d |  |  | Javi; Borja; Christian |  |  |
